# Cronograma_Amil_1_Fase_120220

Schedule from MS Project, 2020-01-02 to 2020-02-21, status date 2020-01-14, A marks actual dates.

## Calendars

- Padrão: Mon-Fri 09:00-12:00, 13:00-18:00; Sat-Sun off.

## Resources

| Resource |
| --- |
| Amil |
| Rodrigo Bueno |
| Marina |
| Priscila |
| Monica |
| Leandro |
| Talk |
| Marcelo Passos |
| Doriedson |
| YhHBrasil |
| Raul |
| Felipe |
| YhHBrasil/Amil |
| Felipe/Ana |

## Schedule

| ID | WBS | Task | Type | Duration | Start | Finish | Complete | Remaining | Baseline start | Baseline finish | Baseline duration | Total slack | Resources | Work | Actual work |
| --- | --- | --- | --- | --- | --- | --- | --- | --- | --- | --- | --- | --- | --- | --- | --- |
| 1 | 1 | **Projeto Amil** |  | 37d | 2020-01-02 A | 2020-02-21 | 87% | 4.95d | 2020-01-02 | 2020-02-10 | 28d | 0d |  | 2016h | 1740.08h |
| 2 | 1.1 | **Planejamento do Projeto** |  | 18d | 2020-01-08 A | 2020-01-31 A | 100% |  | 2020-01-08 | 2020-01-15 | 6d |  |  | 32h | 32h |
| 3 | 1.1.1 | Reunião de Kickoff | manual | 1d | 2020-01-31 A | 2020-01-31 A | 100% |  | 2020-01-15 | 2020-01-15 | 1d |  | Marcelo Passos | 8h | 8h |
| 4 | 1.1.2 | **Documentos de Projeto** |  | 3d | 2020-01-08 A | 2020-01-10 A | 100% |  | 2020-01-08 | 2020-01-10 | 3d |  |  | 24h | 24h |
| 5 | 1.1.2.1 | Plano de Projeto | manual | 1d | 2020-01-10 A | 2020-01-10 A | 100% |  | 2020-01-10 | 2020-01-10 | 1d |  | Marcelo Passos | 8h | 8h |
| 6 | 1.1.2.2 | Cronograma | manual | 1d | 2020-01-08 A | 2020-01-08 A | 100% |  | 2020-01-08 | 2020-01-08 | 1d |  | Marcelo Passos | 8h | 8h |
| 7 | 1.1.2.3 | Matriz de Comunicação | manual | 1d | 2020-01-10 A | 2020-01-10 A | 100% |  | 2020-01-10 | 2020-01-10 | 1d |  | Marcelo Passos | 8h | 8h |
| 8 | 1.2 | **Infraestrutura (TI)** |  | 26d | 2020-01-10 A | 2020-02-14 | 80% | 5.1d | 2020-01-10 | 2020-01-31 | 16d | 0d |  | 616h | 485.68h |
| 9 | 1.2.1 | Adequação da estrutura operacional (Obra) | manual | 23d | 2020-01-15 A | 2020-02-14 | 77% | 5.29d | 2020-01-15 | 2020-01-31 | 13d |  | YhHBrasil | 184h | 141.68h |
| 10 | 1.2.2 | Adequação de Ambiente de Treinamento (YH) | manual | 6d | 2020-01-10 A | 2020-01-17 A | 100% |  | 2020-01-10 | 2020-01-17 | 6d |  | Raul | 48h | 48h |
| 11 | 1.2.3 | Disponibilização do Sistema Interno Amil (SISAMIL) - Homologação | manual | 11d | 2020-01-17 A | 2020-01-31 A | 100% |  |  |  |  |  | Amil | 88h | 88h |
| 12 | 1.2.4 | Disponibilização do Sistema Interno Amil (SISAMIL) - Produção | manual | 6d | 2020-02-05 A | 2020-02-12 A | 100% |  |  |  |  |  |  |  |  |
| 13 | 1.2.5 | Criação usuário/senha para ambiente treinamento | manual | 8d | 2020-02-03 A | 2020-02-12 A | 100% |  |  |  |  |  | Monica | 64h | 64h |
| 14 | 1.2.6 | Definição da rota de chamadas ativas (Telecom) | manual | 7d | 2020-02-05 A | 2020-02-13 |  | 7d | 2020-01-20 | 2020-01-24 | 5d |  | YhHBrasil | 56h |  |
| 15 | 1.2.7 | Contratação de Link de Voz | manual | 9d | 2020-01-13 A | 2020-01-23 A | 100% |  | 2020-01-13 | 2020-01-23 | 9d |  | Raul | 72h | 72h |
| 16 | 1.2.8 | Adequação de Rede | manual | 9d | 2020-01-15 A | 2020-01-27 A | 100% |  | 2020-01-15 | 2020-01-27 | 9d |  | Raul | 72h | 72h |
| 17 | 1.2.9 | Testes do sistema de comunicação de Voz | manual | 2d | 2020-02-12 | 2020-02-13 |  |  | 2020-01-23 | 2020-01-24 | 2d |  | Raul | 16h |  |
| 18 | 1.2.10 | Testes dos sistema de comunicação de Dados | manual | 2d | 2020-02-12 | 2020-02-13 |  |  | 2020-01-23 | 2020-01-24 | 2d |  | Raul | 16h |  |
| 19 | 1.3 | **Fase 1 - Operação Cancelamento Ativo/Inadimplência** |  | 34d | 2020-01-02 A | 2020-02-18 | 92% | 2.7d | 2020-01-02 | 2020-02-06 | 26d | 0d |  | 1328h | 1222.4h |
| 20 | 1.3.1 | **Recrutamento e Seleção** |  | 17d | 2020-01-02 A | 2020-01-24 A | 100% |  | 2020-01-02 | 2020-01-22 | 15d |  |  | 224h | 224h |
| 21 | 1.3.1.1 | Selecionar assistentes de atendimento | manual | 17d | 2020-01-02 A | 2020-01-24 A | 100% |  | 2020-01-02 | 2020-01-22 | 15d |  | Felipe/Ana | 136h | 136h |
| 22 | 1.3.1.2 | Selecionar equipe de apoio e gestão | manual | 11d | 2020-01-02 A | 2020-01-16 A | 100% |  | 2020-01-02 | 2020-01-16 | 11d |  | Felipe/Ana | 88h | 88h |
| 23 | 1.3.2 | **Processos/Qualidade/Treinamento** |  | 29d | 2020-01-03 A | 2020-02-12 | 98% | 0.53d | 2020-01-03 | 2020-02-06 | 25d | 0d |  | 440h | 432h |
| 24 | 1.3.2.1 | Mapear e revisar processos e fluxos de atendimento | manual | 9d | 2020-01-28 A | 2020-02-07 A | 100% |  | 2020-01-08 | 2020-01-23 | 12d |  | Marina | 72h | 72h |
| 25 | 1.3.2.2 | Criar parâmentros de qualidade | manual | 8d | 2020-01-08 A | 2020-01-17 A | 100% |  | 2020-01-08 | 2020-01-17 | 8d |  | Marina | 64h | 64h |
| 26 | 1.3.2.3 | Validar parametros de Qualidade | manual | 1d | 2020-01-22 A | 2020-01-22 A | 100% |  |  |  |  |  | Amil | 8h | 8h |
| 27 | 1.3.2.4 | Criar ferramentas de controle (relatórios e dashboards) | manual | 21d | 2020-01-03 A | 2020-01-31 A | 100% |  | 2020-01-03 | 2020-01-31 | 21d |  | Marina | 168h | 168h |

| ID | WBS | Task | Type | Duration | Start | Finish | Predecessors | Complete | Remaining | Baseline start | Baseline finish | Baseline duration | Total slack | Constraint | Resources | Work | Actual work |
| --- | --- | --- | --- | --- | --- | --- | --- | --- | --- | --- | --- | --- | --- | --- | --- | --- | --- |
| 28 | 1.3.2.5 | **Treinamento de formação inicial - Staff** |  | 7d | 2020-01-20 A | 2020-01-28 A |  | 100% |  | 2020-01-16 | 2020-01-27 | 8d |  |  |  | 56h | 56h |
| 29 | 1.3.2.5.1 | Dia 1 |  | 1d | 2020-01-20 A | 2020-01-20 A |  | 100% |  | 2020-01-16 | 2020-01-16 | 1d |  | start no earlier than 2020-01-20 | Marina | 8h | 8h |
| 30 | 1.3.2.5.2 | Dia 2 |  | 1d | 2020-01-21 A | 2020-01-21 A | 29 | 100% |  | 2020-01-17 | 2020-01-17 | 1d |  |  | Marina | 8h | 8h |
| 31 | 1.3.2.5.3 | Dia 3 |  | 1d | 2020-01-22 A | 2020-01-22 A | 30 | 100% |  | 2020-01-20 | 2020-01-20 | 1d |  |  | Priscila | 8h | 8h |
| 32 | 1.3.2.5.4 | Dia 4 |  | 1d | 2020-01-23 A | 2020-01-23 A | 31 | 100% |  | 2020-01-21 | 2020-01-21 | 1d |  |  | Priscila | 8h | 8h |
| 33 | 1.3.2.5.5 | Dia 5 |  | 1d | 2020-01-24 A | 2020-01-24 A | 32 | 100% |  | 2020-01-22 | 2020-01-22 | 1d |  |  | Priscila | 8h | 8h |
| 34 | 1.3.2.5.6 | Dia 6 |  | 1d | 2020-01-27 A | 2020-01-27 A | 33 | 100% |  | 2020-01-27 | 2020-01-27 | 1d |  |  | Priscila | 8h | 8h |
| 35 | 1.3.2.5.7 | Dia 7 |  | 1d | 2020-01-28 A | 2020-01-28 A | 34 | 100% |  | 2020-01-20 | 2020-01-20 | 1d |  |  | Priscila | 8h | 8h |
| 36 | 1.3.2.6 | **Treinamento de formação inicial - Operação** |  | 8d | 2020-02-03 A | 2020-02-12 |  | 89% | 0.89d | 2020-01-27 | 2020-02-06 | 9d | 0d |  |  | 72h | 64h |
| 37 | 1.3.2.6.1 | Dia 1 | manual | 1d | 2020-02-03 A | 2020-02-03 A |  | 100% |  | 2020-01-27 | 2020-01-27 | 1d |  |  | Marina | 8h | 8h |
| 38 | 1.3.2.6.2 | Dia 2 | manual | 1d | 2020-02-04 A | 2020-02-04 A |  | 100% |  | 2020-01-28 | 2020-01-28 | 1d |  |  | Priscila | 8h | 8h |
| 39 | 1.3.2.6.3 | Dia 3 | manual | 1d | 2020-02-05 A | 2020-02-05 A |  | 100% |  | 2020-01-29 | 2020-01-29 | 1d |  |  | Priscila | 8h | 8h |
| 40 | 1.3.2.6.4 | Dia 4 | manual | 1d | 2020-02-06 A | 2020-02-06 A |  | 100% |  | 2020-01-30 | 2020-01-30 | 1d |  |  | Priscila | 8h | 8h |
| 41 | 1.3.2.6.5 | Dia 5 | manual | 1d | 2020-02-07 A | 2020-02-07 A |  | 100% |  | 2020-01-31 | 2020-01-31 | 1d |  |  | Priscila | 8h | 8h |
| 42 | 1.3.2.6.6 | Dia 6 | manual | 1d | 2020-02-08 A | 2020-02-08 A |  | 100% |  | 2020-02-03 | 2020-02-03 | 1d |  |  | Priscila | 8h | 8h |
| 43 | 1.3.2.6.7 | Dia 7 | manual | 1d | 2020-02-10 A | 2020-02-10 A |  | 100% |  | 2020-02-04 | 2020-02-04 | 1d |  |  | Priscila | 8h | 8h |
| 44 | 1.3.2.6.8 | Dia 8 | manual | 1d | 2020-02-11 A | 2020-02-11 A |  | 100% |  | 2020-02-05 | 2020-02-05 | 1d |  |  | Priscila | 8h | 8h |
| 45 | 1.3.2.6.9 | Dia 9 | manual | 1d | 2020-02-12 | 2020-02-12 |  |  |  | 2020-02-06 | 2020-02-06 | 1d |  |  | Priscila | 8h |  |
| 46 | 1.3.3 | **Planejamento/MIS** |  | 14d | 2020-01-03 A | 2020-01-22 A |  | 100% |  | 2020-01-03 | 2020-01-31 | 21d |  |  |  | 296h | 296h |
| 47 | 1.3.3.1 | Criação da matriz de comunição MIS/Amil (FTP) | manual | 6d | 2020-01-08 A | 2020-01-15 A |  | 100% |  | 2020-01-08 | 2020-01-15 | 6d |  |  | Doriedson | 48h | 48h |
| 48 | 1.3.3.2 | Análise dos relatórios legados | manual | 7d | 2020-01-03 A | 2020-01-13 A |  | 100% |  | 2020-01-03 | 2020-01-13 | 7d |  |  | Doriedson | 56h | 56h |
| 49 | 1.3.3.3 | Definição do formato dos relatórios de performance operacional | manual | 6d | 2020-01-08 A | 2020-01-15 A |  | 100% |  | 2020-01-08 | 2020-01-15 | 6d |  |  | Amil | 48h | 48h |
| 50 | 1.3.3.4 | Análise do formato de mailing | manual | 6d | 2020-01-08 A | 2020-01-15 A |  | 100% |  | 2020-01-08 | 2020-01-15 | 6d |  |  | Doriedson | 48h | 48h |
| 51 | 1.3.3.5 | Definição do formato de mailing para importação | manual | 6d | 2020-01-08 A | 2020-01-15 A |  | 100% |  | 2020-01-08 | 2020-01-15 | 6d |  |  | Doriedson | 48h | 48h |
| 52 | 1.3.3.6 | Definição da rotina de recebimento de mailing | manual | 3d | 2020-01-20 A | 2020-01-22 A |  | 100% |  | 2020-01-08 | 2020-01-15 | 6d |  |  | Doriedson | 24h | 24h |
| 53 | 1.3.3.7 | Definição da matriz de envio dos relatórios | manual | 3d | 2020-01-20 A | 2020-01-22 A |  | 100% |  | 2020-01-08 | 2020-01-15 | 6d |  |  | Doriedson | 24h | 24h |

| ID | WBS | Task | Type | Duration | Start | Finish | Complete | Remaining | Baseline start | Baseline finish | Baseline duration | Total slack | Resources | Work | Actual work |
| --- | --- | --- | --- | --- | --- | --- | --- | --- | --- | --- | --- | --- | --- | --- | --- |
| 54 | 1.3.4 | **Sistemas de Atendimento** |  | 28d | 2020-01-10 A | 2020-02-18 | 73% | 7.43d | 2020-01-13 | 2020-02-04 | 17d | 0d |  | 368h | 270.4h |
| 55 | 1.3.4.1 | Fluxo de Atendimento - (ER) | manual | 5d | 2020-01-10 A | 2020-01-16 A | 100% |  |  |  |  |  | Rodrigo Bueno | 40h | 40h |
| 56 | 1.3.4.2 | Desenvolvimento CRM (Hello Next) com particularidades AMIL | manual | 15d | 2020-01-13 A | 2020-01-31 A | 100% |  | 2020-01-13 | 2020-01-13 | 1d? |  | Leandro | 120h | 120h |
| 57 | 1.3.4.3 | Integração de telefonia com gateway Braspag | manual | 23d | 2020-01-17 A | 2020-02-18 | 60% | 9.2d | 2020-01-13 | 2020-02-04 | 17d |  | Talk | 184h | 110.4h |
| 58 | 1.3.4.4 | Parametrizações do Hello Next | manual | 3d | 2020-02-12 A | 2020-02-14 |  | 3d | 2020-01-13 | 2020-01-13 | 1d? |  | Leandro | 24h |  |
| 59 | 1.4 | Homologação e validação de Ambiente | manual | 4d | 2020-02-17 | 2020-02-20 |  |  | 2020-02-07 | 2020-02-07 | 1d |  | Rodrigo Bueno | 32h |  |
| 60 | 1.5 | Go live | manual | 1d | 2020-02-21 | 2020-02-21 |  |  | 2020-02-10 | 2020-02-10 | 1d |  | YhHBrasil/Amil | 8h |  |
